Schedule from MS Project, 2025-08-18 to 2025-10-21, costs in R$.

## Calendars

- Padrão: Mon-Fri 09:00-12:00, 13:00-18:00; Sat-Sun off.

## Resources

| Resource | Rate |
| --- | --- |
| Carlos | 150 |
| Vivian | 150 |
| Cliente |  |
| Thiago | 150 |

## Schedule

| ID | WBS | Task | Type | Duration | Start | Finish | Predecessors | Total slack | Free slack | Constraint | Resources | Work | Cost |
| --- | --- | --- | --- | --- | --- | --- | --- | --- | --- | --- | --- | --- | --- |
| 1 | 1 | **Projeto ProfScore** |  | 46.12d | 2025-08-18 | 2025-10-21 |  | 0d |  |  |  | 304h | 45,450 |
| 2 | 1.1 | **Prospecção** |  | 8d | 2025-08-18 | 2025-08-27 |  | 2.88d | 0d |  |  | 20h | 3,000 |
| 3 | 1.1.1 | **PTEC** |  | 4d | 2025-08-18 | 2025-08-21 |  | 2.88d |  |  |  | 14h | 2,100 |
| 4 | 1.1.1.1 | Reunião com Stakeholders |  | 1d | 2025-08-18 | 2025-08-18 |  | 2.88d | 0d | start no earlier than 2025-08-18 | Carlos | 1h | 150 |
| 5 | 1.1.1.2 | Redigir PTEC |  | 2d | 2025-08-19 | 2025-08-20 | 4 | 2.88d | 0d |  | Vivian | 12h | 1,800 |
| 6 | 1.1.1.3 | Revisar PTEC |  | 1d | 2025-08-21 | 2025-08-21 | 5 | 2.88d | 0d |  | Carlos | 1h | 150 |
| 7 | 1.1.1.4 | Aprovar PTEC | milestone | 0d | 2025-08-21 | 2025-08-21 | 6 | 6.88d |  |  | Cliente |  |  |
| 8 | 1.1.2 | **Est. Prel. Tam.** |  | 2d | 2025-08-22 | 2025-08-25 |  | 2.88d | 0d |  |  | 3h | 450 |
| 9 | 1.1.2.1 | Estimar Tam. Do Projeto |  | 1d | 2025-08-22 | 2025-08-22 | 6 | 2.88d | 0d |  | Thiago | 2h | 300 |
| 10 | 1.1.2.2 | Revisar Estimativa de Tam. Do Projeto |  | 1d | 2025-08-25 | 2025-08-25 | 9 | 2.88d |  |  | Vivian | 1h | 150 |
| 11 | 1.1.3 | **Est. Prel. Cronograma e Orçamento** |  | 2d | 2025-08-26 | 2025-08-27 |  | 2.88d |  |  |  | 3h | 450 |
| 12 | 1.1.3.1 | Elaborar Cronograma e Orçamento Preliminares |  | 1d | 2025-08-26 | 2025-08-26 | 8 | 2.88d | 0d |  | Carlos | 2h | 300 |
| 13 | 1.1.3.2 | Revisar Cronograma e Orçamento Preliminares |  | 1d | 2025-08-27 | 2025-08-27 | 12 | 2.88d |  |  | Vivian | 1h | 150 |
| 14 | 1.2 | **Análise** |  | 3.75d | 2025-08-28 | 2025-09-02 |  | 0d |  |  |  | 30h | 4,350 |
| 15 | 1.2.1 | **Documento de Requisitos** |  | 2.5d | 2025-08-28 | 2025-09-01 |  | 0d |  |  |  | 20h | 2,850 |
| 16 | 1.2.1.1 | Reunião Com Stakeholders | manual | 0.25d | 2025-08-28 | 2025-08-28 | 2 |  |  |  | Thiago | 2h | 300 |
| 17 | 1.2.1.2 | Elaborar DRE | manual | 1.75d | 2025-08-28 | 2025-08-29 | 16 |  |  |  | Carlos | 14h | 2,100 |
| 18 | 1.2.1.3 | Revisar DRE | manual | 0.38d | 2025-09-01 | 2025-09-01 | 17 |  |  |  | Thiago | 3h | 450 |
| 19 | 1.2.1.4 | Validação com stakeholders | manual | 0.12d | 2025-09-01 | 2025-09-01 | 18 |  |  |  | Cliente | 1h |  |
| 20 | 1.2.2 | **MRB** |  | 1.25d | 2025-09-01 | 2025-09-02 |  | 0d |  |  |  | 10h | 1,500 |
| 21 | 1.2.2.1 | Elaborar MRB | manual | 1d | 2025-09-01 | 2025-09-02 | 15 |  |  |  | Vivian | 8h | 1,200 |
| 22 | 1.2.2.2 | Revisar MRB | manual | 0.25d | 2025-09-02 | 2025-09-02 | 21 |  |  |  | Thiago | 2h | 300 |
| 23 | 1.3 | **Projeto** |  | 6.12d | 2025-09-02 | 2025-09-10 |  | 0d |  |  |  | 51h | 7,650 |
| 24 | 1.3.1 | Definição da arquitetura | manual | 0.25d | 2025-09-02 | 2025-09-02 | 14 |  |  |  | Vivian | 2h | 300 |

| ID | WBS | Task | Type | Duration | Start | Finish | Predecessors | Total slack | Resources | Work | Cost |
| --- | --- | --- | --- | --- | --- | --- | --- | --- | --- | --- | --- |
| 25 | 1.3.2 | **Diagrama de Casos de Uso** |  | 1.62d | 2025-09-03 | 2025-09-04 |  | 0d |  | 14h | 2,100 |
| 26 | 1.3.2.1 | Elaborar Diagrama de Casos de Uso | manual | 1.5d | 2025-09-03 | 2025-09-04 | 24 |  | Vivian | 12h | 1,800 |
| 27 | 1.3.2.2 | Revisar Diagrama de Casos de Uso | manual | 0.12d | 2025-09-04 | 2025-09-04 | 26 |  | Thiago | 2h | 300 |
| 28 | 1.3.3 | **Diagrama de Classes** |  | 1.5d | 2025-09-04 | 2025-09-08 |  | 0d |  | 13h | 1,950 |
| 29 | 1.3.3.1 | Elaborar Diagrama de Classes | manual | 1.25d | 2025-09-04 | 2025-09-05 | 27 |  | Carlos | 10h | 1,500 |
| 30 | 1.3.3.2 | Revisar Diagrama de Classes | manual | 0.12d | 2025-09-05 | 2025-09-05 | 29 |  | Vivian | 2h | 300 |
| 31 | 1.3.3.3 | Atualizar MRB | manual | 0.12d | 2025-09-08 | 2025-09-08 | 30 |  | Carlos | 1h | 150 |
| 32 | 1.3.4 | **Modelo Entidade Relacionamento** |  | 1.62d | 2025-09-08 | 2025-09-09 |  | 0d |  | 13h | 1,950 |
| 33 | 1.3.4.1 | Elaborar MRE | manual | 1.5d | 2025-09-08 | 2025-09-09 | 31 |  | Vivian | 12h | 1,800 |
| 34 | 1.3.4.2 | Revisar MRE | manual | 0.12d | 2025-09-09 | 2025-09-09 | 33 |  | Carlos | 1h | 150 |
| 35 | 1.3.5 | Protótipo de interface responsiva | manual | 0.62d | 2025-09-09 | 2025-09-10 | 34 |  | Vivian | 5h | 750 |
| 36 | 1.3.6 | Planejamento de testes | manual | 0.25d | 2025-09-10 | 2025-09-10 | 35 |  | Carlos | 2h | 300 |
| 37 | 1.3.7 | Aprovação do projeto técnico | manual | 0.25d | 2025-09-10 | 2025-09-10 | 36 |  | Thiago | 2h | 300 |
| 38 | 1.4 | **Implementação** |  | 31.12d | 2025-09-06 | 2025-10-21 |  | 0d |  | 203h | 30,450 |
| 39 | 1.4.1 | **Release 01** |  | 3.5d | 2025-09-10 | 2025-09-16 |  | 0d |  | 28h | 4,200 |
| 40 | 1.4.1.1 | CRUD Usuários (RFS01–RFS04), cadastro, login, perfis. | manual | 1d | 2025-09-10 | 2025-09-11 | 23 |  | Vivian | 8h | 1,200 |
| 41 | 1.4.1.2 | CRUD Avaliações (RFS07–RFS08), criar, editar, excluir avaliações. | manual | 2.5d | 2025-09-11 | 2025-09-16 | 40 |  | Carlos | 20h | 3,000 |
| 42 | 1.4.2 | **Release 02** |  | 5d | 2025-09-16 | 2025-09-23 |  | 0d |  | 40h | 6,000 |
| 43 | 1.4.2.1 | CRUD Feedbacks (RFS09–RFS10), professores e alunos inserindo feedback. | manual | 2.5d | 2025-09-16 | 2025-09-18 | 39 |  | Thiago | 20h | 3,000 |
| 44 | 1.4.2.2 | CRUD Histórico Acadêmico (RFS13–RFS14), registro e consulta do histórico do aluno. | manual | 2.5d | 2025-09-18 | 2025-09-23 | 43 |  | Vivian | 20h | 3,000 |
| 45 | 1.4.3 | **Release 03** |  | 6.88d | 2025-09-23 | 2025-10-02 |  | 0d |  | 55h | 8,250 |
| 46 | 1.4.3.1 | CRUD Relatórios (RFS05), gerenciamento de relatórios no sistema. | manual | 2.5d | 2025-09-23 | 2025-09-25 | 42 |  | Vivian | 20h | 3,000 |
| 47 | 1.4.3.2 | CRUD Pesquisa/Filtros (RFS15–RFS16), salvar consultas/filtros no sistema. | manual | 2.5d | 2025-09-25 | 2025-09-30 | 46 |  | Carlos | 20h | 3,000 |
| 48 | 1.4.3.3 | Implementação Relatório 1 (RFS06), geração/exportação de relatório básico. | manual | 1.88d | 2025-09-30 | 2025-10-02 | 47 |  | Thiago | 15h | 2,250 |

| ID | WBS | Task | Type | Duration | Start | Finish | Predecessors | Total slack | Resources | Work | Cost |
| --- | --- | --- | --- | --- | --- | --- | --- | --- | --- | --- | --- |
| 49 | 1.4.4 | **Release 04** |  | 12.88d | 2025-10-02 | 2025-10-21 |  | 0d |  | 80h | 12,000 |
| 50 | 1.4.4.1 | Requisitos Não Funcionais | manual | 2.5d | 2025-10-02 | 2025-10-06 | 45 |  | Thiago | 20h | 3,000 |
| 51 | 1.4.4.2 | Integração frontend + backend | manual | 2.5d | 2025-10-07 | 2025-10-10 | 50 |  | Vivian | 20h | 3,000 |
| 52 | 1.4.4.3 | Testes unitários | manual | 1.25d | 2025-10-10 | 2025-10-13 | 51 |  | Carlos | 10h | 1,500 |
| 53 | 1.4.4.4 | Testes de integração | manual | 1.25d | 2025-10-13 | 2025-10-14 | 52 |  | Thiago | 10h | 1,500 |
| 54 | 1.4.4.5 | Testes de desempenho e segurança | manual | 1.25d | 2025-10-14 | 2025-10-15 | 53 |  | Vivian | 10h | 1,500 |
| 55 | 1.4.4.6 | Testes de aceitação (UAT) | manual | 1.25d | 2025-10-15 | 2025-10-17 | 54 |  | Carlos | 10h | 1,500 |
| 56 | 1.4.4.7 | Encerramento | manual | 1d | 2025-10-20 | 2025-10-21 |  |  |  |  |  |
| 57 | 1.4.5 | **Monitoramento e Controle** |  | 0d | 2025-09-06 | 2025-09-06 |  | 31.12d |  |  |  |
| 58 | 1.4.5.1 | Baseline config + GitHub/SVN | manual | 1d | 2025-09-06 | 2025-09-06 |  |  |  |  |  |
| 59 | 1.4.5.2 | Testes Selenium + Registro de Bugs | manual | 1d | 2025-09-06 | 2025-09-06 |  |  |  |  |  |
| 60 | 1.4.5.3 | Status Report | manual | 1d | 2025-09-06 | 2025-09-06 |  |  |  |  |  |
